@startgantt 投票系统开发路线图

title 投票系统开发路线图 (2025.12 - 2026.3)

projectscale daily

' ==================== 第一阶段 ====================
[第一阶段: Commit-Reveal 基础系统] as [P1] lasts 20 days
[P1] starts 2025-12-11

[项目初始化与架构设计] as [T1.1] lasts 3 days
[T1.1] starts 2025-12-11

[VotingFactory 工厂合约] as [T1.2] lasts 4 days
[T1.2] starts after [T1.1]

[ModuleRegistry 模块注册表] as [T1.3] lasts 3 days
[T1.3] starts after [T1.1]

[VotingInstance 核心逻辑] as [T1.4] lasts 5 days
[T1.4] starts after [T1.2]

[Commit-Reveal 两阶段协议] as [T1.5] lasts 5 days
[T1.5] starts after [T1.4]

[基础单元测试] as [T1.6] lasts 3 days
[T1.6] starts after [T1.5]

[里程碑1: 基础投票可用] as [M1] happens at 2025-12-30

' ==================== 第二阶段 ====================
[第二阶段: 投票方案模块化] as [P2] lasts 30 days
[P2] starts 2026-01-01

[IVotingRule 接口设计] as [T2.1] lasts 2 days
[T2.1] starts 2026-01-01

[简单多数投票模块] as [T2.2] lasts 3 days
[T2.2] starts after [T2.1]

[加权投票模块] as [T2.3] lasts 4 days
[T2.3] starts after [T2.2]

[二次方投票模块] as [T2.4] lasts 5 days
[T2.4] starts after [T2.3]

[IAccessControl 接口设计] as [T2.5] lasts 2 days
[T2.5] starts after [T2.1]

[Token/NFT 门控模块] as [T2.6] lasts 4 days
[T2.6] starts after [T2.5]

[白名单 Merkle 验证] as [T2.7] lasts 3 days
[T2.7] starts after [T2.6]

[ITiming 时间控制模块] as [T2.8] lasts 4 days
[T2.8] starts after [T2.4]

[IExecution 执行机制模块] as [T2.9] lasts 4 days
[T2.9] starts after [T2.8]

[模块集成测试] as [T2.10] lasts 4 days
[T2.10] starts after [T2.9]

[里程碑2: 模块化框架完成] as [M2] happens at 2026-01-30

' ==================== 第三阶段 ====================
[第三阶段: 隐私保护集成] as [P3] lasts 21 days
[P3] starts 2026-02-01

[Paillier 同态加密研究] as [T3.1] lasts 3 days
[T3.1] starts 2026-02-01

[加密投票模块开发] as [T3.2] lasts 5 days
[T3.2] starts after [T3.1]

[同态聚合计票实现] as [T3.3] lasts 4 days
[T3.3] starts after [T3.2]

[Semaphore 协议研究] as [T3.4] lasts 3 days
[T3.4] starts 2026-02-01

[Semaphore 群组管理] as [T3.5] lasts 4 days
[T3.5] starts after [T3.4]

[ZK 证明验证集成] as [T3.6] lasts 4 days
[T3.6] starts after [T3.5]

[阈值解密委员会] as [T3.7] lasts 4 days
[T3.7] starts after [T3.3]

[完全隐私模块整合] as [T3.8] lasts 3 days
[T3.8] starts after [T3.6]
[T3.8] starts after [T3.7]

[里程碑3: 隐私功能完成] as [M3] happens at 2026-02-21

' ==================== 第四阶段 ====================
[第四阶段: 测试与完善] as [P4] lasts 23 days
[P4] starts 2026-02-22

[安全审计准备] as [T4.1] lasts 3 days
[T4.1] starts 2026-02-22

[Fuzzing 测试] as [T4.2] lasts 5 days
[T4.2] starts after [T4.1]

[Gas 优化] as [T4.3] lasts 4 days
[T4.3] starts after [T4.2]

[前端 Demo 开发] as [T4.4] lasts 7 days
[T4.4] starts 2026-02-22

[集成测试] as [T4.5] lasts 5 days
[T4.5] starts after [T4.3]

[文档编写] as [T4.6] lasts 4 days
[T4.6] starts after [T4.5]

[测试网部署] as [T4.7] lasts 3 days
[T4.7] starts after [T4.6]

[里程碑4: 测试网发布] as [M4] happens at 2026-03-16

@endgantt

